# Pq

Schedule from OmniPlan, 2001-01-01 to 2001-02-06.

## Resources

| Resource | Group |
| --- | --- |
| Resource 1 | staff |
| Equipment 1 | equipment |
| Material 1 | material |
| Group 1 | group |
| Zeno Rocha | staff |
| Designer da Bósnia | staff |
| Eduardo Lundgren | staff |
| English Revisor | staff |

## Schedule

| ID | WBS | Task | Start | Predecessors | Resources | Work |
| --- | --- | --- | --- | --- | --- | --- |
| 1 | 1 | **Examples** |  |  |  |  |
| 2 | 1.1 | **Component: Autocomplete** |  |  |  |  |
| 3 | 1.1.1 | Study Component | 2001-01-01 |  | Zeno Rocha | 8h |
| 4 | 1.1.2 | Code Basic Example | 2001-01-02 | 3 | Zeno Rocha | 8h |
| 5 | 1.1.3 | Code Real World Example | 2001-01-03 | 4 | Zeno Rocha | 8h |
| 6 | 1.1.4 | Technical Revision | 2001-01-04 | 5 | Eduardo Lundgren | 8h |
| 7 | 1.2 | **Component: Button** |  |  |  |  |
| 8 | 1.2.1 | Study Component | 2001-01-03 |  | Zeno Rocha | 8h |
| 9 | 1.2.2 | Code Basic Example | 2001-01-05 | 8 | Zeno Rocha | 8h |
| 10 | 1.2.3 | Code Real World Example | 2001-01-08 | 9 | Zeno Rocha | 8h |
| 11 | 1.2.4 | Technical Revision | 2001-01-09 | 10 | Eduardo Lundgren | 8h |
| 12 | 1.3 | **Component: Calendar** |  |  |  |  |
| 13 | 1.3.1 | Study Component | 2001-01-08 |  | Zeno Rocha | 8h |
| 14 | 1.3.2 | Code Basic Example | 2001-01-10 | 13 | Zeno Rocha | 8h |
| 15 | 1.3.3 | Code Real World Example | 2001-01-11 | 14 | Zeno Rocha | 8h |
| 16 | 1.3.4 | Technical Revision | 2001-01-12 | 15 | Eduardo Lundgren | 8h |
| 17 | 2 | **Documentation** |  |  |  |  |
| 18 | 2.1 | **Section: Autocomplete** |  |  |  |  |
| 19 | 2.1.1 | Write text about it | 2001-01-11 |  | Zeno Rocha | 8h |
| 20 | 2.1.2 | Technical Revision | 2001-01-15 | 19 | Eduardo Lundgren | 8h |
| 21 | 2.1.3 | English Revision | 2001-01-15 | 19 | English Revisor | 8h |
| 22 | 2.2 | **Section: Button** |  |  |  |  |
| 23 | 2.2.1 | Write text about it | 2001-01-12 |  | Zeno Rocha | 8h |
| 24 | 2.2.2 | Technical Revision | 2001-01-16 | 23 | Eduardo Lundgren | 8h |
| 25 | 2.2.3 | English Revision | 2001-01-16 | 23 | English Revisor | 8h |

| ID | WBS | Task | Start | Predecessors | Resources | Work |
| --- | --- | --- | --- | --- | --- | --- |
| 26 | 2.3 | **Section: Calendar** |  |  |  |  |
| 27 | 2.3.1 | Write text about it | 2001-01-15 |  | Zeno Rocha | 8h |
| 28 | 2.3.2 | Technical Revision | 2001-01-17 | 27 | Eduardo Lundgren | 8h |
| 29 | 2.3.3 | English Revision | 2001-01-17 | 27 | English Revisor | 8h |
| 30 | 2.4 | **Section: Getting Started** |  |  |  |  |
| 31 | 2.4.1 | Write text about it | 2001-01-16 |  | Zeno Rocha | 8h |
| 32 | 2.4.2 | Technical Revision | 2001-01-18 | 31 | Eduardo Lundgren | 8h |
| 33 | 2.4.3 | English Revision | 2001-01-18 | 31 | English Revisor | 8h |
| 34 | 3 | **API Docs** |  |  |  |  |
| 35 | 3.1 | Move from AlloyUI's repository to Alloyui.com repository | 2001-01-17 |  | Zeno Rocha | 8h |
| 36 | 3.2 | Improve design according to the website's identity | 2001-01-19 | 35 | Designer da Bósnia | 40h |
| 37 | 3.3 | Implement layout | 2001-01-26 | 36 | Zeno Rocha | 24h |
| 38 | 4 | **Contribute** |  |  |  |  |
| 39 | 4.1 | Write text of this section | 2001-01-18 |  | Zeno Rocha | 8h |
| 40 | 5 | **About** |  |  |  |  |
| 41 | 5.1 | Write text of this section | 2001-01-19 |  | Zeno Rocha | 8h |
| 42 | 6 | **Website** |  |  |  |  |
| 43 | 6.1 | Design | 2001-01-01 |  | Designer da Bósnia | 80h |
| 44 | 6.2 | Implement layout | 2001-01-30 | 43 | Zeno Rocha | 40h |
| 45 | 6.3 | Define which websites are going to be displayed at Showcase's section | 2001-01-22 |  | Zeno Rocha | 8h |
| 46 | 7 | **Rosseta Stone** |  |  |  |  |
| 47 | 7.1 | Move from AlloyUI's repository to another repository | 2001-01-23 |  | Zeno Rocha | 8h |
| 48 | 7.2 | Update guide with the new versions of jQuery, YUI3 and AlloyUI | 2001-02-06 | 47 | Zeno Rocha | 40h |
